Schedule from MS Project, 2020-07-01 to 2020-08-20, status date 2020-11-30, costs in $, A marks actual dates.

## Calendars

- Estándar: Mon-Fri 09:00-13:00, 15:00-19:00; Sat-Sun off.

## Resources

| Resource | Rate |
| --- | --- |
| Desarrollador 1 | 30000 |
| Desarrollador 2 | 30000 |
| Internet |  |
| Computador 1 |  |
| Computador 2 |  |

## Schedule

| ID | WBS | Task | Type | Duration | Start | Finish | Predecessors | Complete | Resources | Work | Actual work | Cost | Actual cost |
| --- | --- | --- | --- | --- | --- | --- | --- | --- | --- | --- | --- | --- | --- |
| 1 | 1 | **Proyecto MMG** |  | 36.88d | 2020-07-01 09:00 A | 2020-08-20 18:00 A |  | 100% | Computador 2 [0.1%]; Internet [0.1%]; Computador 1 [0.1%] | 470.5h | 470.5h | 16,455,000 | 16,455,000 |
| 2 | 1.1 | **Documento de análisis** |  | 2.38d | 2020-07-01 09:00 A | 2020-07-03 12:00 A |  | 100% |  | 25.5h | 25.5h | 765,000 | 765,000 |
| 3 | 1.1.1 | **Especificación funcional** |  | 0.62d | 2020-07-01 09:00 A | 2020-07-01 16:00 A |  | 100% |  | 6.5h | 6.5h | 195,000 | 195,000 |
| 4 | 1.1.1.1 | Reunión con el gerente | manual | 1h | 2020-07-01 09:00 A | 2020-07-01 10:00 A |  | 100% | Desarrollador 1; Computador 1 | 1h | 1h | 30,000 | 30,000 |
| 5 | 1.1.1.2 | Reunión con el personal | manual | 1.5h | 2020-07-01 10:00 A | 2020-07-01 11:30 A | 4 | 100% | Desarrollador 1; Computador 1 | 1.5h | 1.5h | 45,000 | 45,000 |
| 6 | 1.1.1.3 | Recopilación de información | manual | 1.5h | 2020-07-01 11:30 A | 2020-07-01 13:00 A | 5 | 100% | Desarrollador 1; Desarrollador 2; Computador 1; Computador 2 | 3h | 3h | 90,000 | 90,000 |
| 7 | 1.1.1.4 | Acta de visita | manual | 1h | 2020-07-01 15:00 A | 2020-07-01 16:00 A | 6 | 100% | Desarrollador 1; Computador 1 | 1h | 1h | 30,000 | 30,000 |
| 8 | 1.1.2 | **Requerimientos funcional** |  | 0.62d | 2020-07-02 09:00 A | 2020-07-02 16:00 A |  | 100% |  | 5h | 5h | 150,000 | 150,000 |
| 9 | 1.1.2.1 | Reunión con el gerente | manual | 1h | 2020-07-02 09:00 A | 2020-07-02 10:00 A | 7 | 100% | Desarrollador 1; Computador 1 [0.1%] | 1h | 1h | 30,000 | 30,000 |
| 10 | 1.1.2.2 | Reunión con el personal | manual | 1.5h | 2020-07-02 10:00 A | 2020-07-02 11:30 A | 9 | 100% | Desarrollador 1; Computador 1 [0.1%] | 1.5h | 1.5h | 45,000 | 45,000 |
| 11 | 1.1.2.3 | Recopilación de información | manual | 1.5h | 2020-07-02 11:30 A | 2020-07-02 13:00 A | 10 | 100% | Desarrollador 1; Computador 1 [0.1%]; Internet | 1.5h | 1.5h | 45,000 | 45,000 |
| 12 | 1.1.2.4 | Acta de visita | manual | 1h | 2020-07-02 15:00 A | 2020-07-02 16:00 A | 11 | 100% | Desarrollador 1; Computador 1 [0.1%] | 1h | 1h | 30,000 | 30,000 |
| 13 | 1.1.3 | **Requerimientos no funcionales** |  | 1.75d | 2020-07-01 16:00 A | 2020-07-03 12:00 A |  | 100% |  | 14h | 14h | 420,000 | 420,000 |
| 14 | 1.1.3.1 | Reunión con el personal | manual | 6.5h | 2020-07-01 16:00 A | 2020-07-02 12:30 A | 7 | 100% | Computador 2; Desarrollador 2; Internet | 6.5h | 6.5h | 195,000 | 195,000 |
| 15 | 1.1.3.2 | Recopilación de información | manual | 6.5h | 2020-07-02 12:30 A | 2020-07-03 11:00 A | 14 | 100% | Desarrollador 2; Computador 2; Internet | 6.5h | 6.5h | 195,000 | 195,000 |
| 16 | 1.1.3.3 | Acta de visita | manual | 1h | 2020-07-03 11:00 A | 2020-07-03 12:00 A | 15 | 100% | Computador 2 [0.1%]; Desarrollador 2; Internet | 1h | 1h | 30,000 | 30,000 |
| 17 | 1.2 | Control avance 001 | manual | 8h | 2020-07-06 17:00 A | 2020-07-07 17:00 A | 16, 11 | 100% | Desarrollador 2; Desarrollador 1; Computador 1; Computador 2; Internet | 16h | 16h | 480,000 | 480,000 |
| 18 | 1.3 | **Documento de diseño** |  | 9d | 2020-07-07 17:00 A | 2020-07-20 17:00 A |  | 100% |  | 90h | 90h | 2,700,000 | 2,700,000 |
| 19 | 1.3.1 | **Diseño funcional** |  | 4d | 2020-07-07 17:00 A | 2020-07-13 17:00 A |  | 100% |  | 30h | 30h | 900,000 | 900,000 |
| 20 | 1.3.1.1 | Socialización funcionalidades software | manual | 2h | 2020-07-07 17:00 A | 2020-07-07 19:00 A | 17 | 100% | Desarrollador 2; Desarrollador 1; Computador 1; Computador 2; Internet | 4h | 4h | 120,000 | 120,000 |
| 21 | 1.3.1.2 | Socialización requerimientos funcionales software | manual | 3h | 2020-07-08 09:00 A | 2020-07-08 12:00 A | 20 | 100% | Desarrollador 2; Desarrollador 1; Computador 1; Computador 2; Internet | 6h | 6h | 180,000 | 180,000 |
| 22 | 1.3.1.3 | Socialización requerimientos no funcionales software | manual | 1h | 2020-07-08 12:00 A | 2020-07-08 13:00 A | 21 | 100% | Desarrollador 2; Desarrollador 1; Computador 1; Computador 2; Internet | 2h | 2h | 60,000 | 60,000 |
| 23 | 1.3.1.4 | Realizar cambios de requerimientos funcionales al prototipo | manual | 8h | 2020-07-08 15:00 A | 2020-07-10 13:00 A | 22 | 100% | Internet; Computador 2 [0.1%]; Desarrollador 2 | 8h | 8h | 240,000 | 240,000 |
| 24 | 1.3.1.5 | Realizar cambios de requerimientos no funcionales al prototipo | manual | 8h | 2020-07-08 15:00 A | 2020-07-09 13:00 A | 22 | 100% | Internet; Computador 1 [0.1%]; Desarrollador 1 | 8h | 8h | 240,000 | 240,000 |
| 25 | 1.3.1.6 | Acta de cambios del prototipo | manual | 2h | 2020-07-13 15:00 A | 2020-07-13 17:00 A | 24 | 100% | Desarrollador 2; Computador 2; Internet; Computador 1; Desarrollador 1 | 2h | 2h | 60,000 | 60,000 |

| ID | WBS | Task | Type | Duration | Start | Finish | Predecessors | Complete | Resources | Work | Actual work | Cost | Actual cost |
| --- | --- | --- | --- | --- | --- | --- | --- | --- | --- | --- | --- | --- | --- |
| 26 | 1.3.2 | **Diseño técnico** |  | 3.5d | 2020-07-13 17:00 A | 2020-07-17 11:00 A |  | 100% |  | 36h | 36h | 1,080,000 | 1,080,000 |
| 27 | 1.3.2.1 | Socialización requerimientos no funcionales software | manual | 2h | 2020-07-13 17:00 A | 2020-07-13 19:00 A | 25 | 100% | Desarrollador 2; Desarrollador 1; Computador 1; Internet; Computador 2 | 4h | 4h | 120,000 | 120,000 |
| 28 | 1.3.2.2 | Realizar cambios de requerimientos no funcionales al prototipo | manual | 16h | 2020-07-14 09:00 A | 2020-07-15 19:00 A | 27 | 100% | Internet; Computador 2 [0.1%]; Desarrollador 2; Computador 1; Desarrollador 1 | 16h | 16h | 480,000 | 480,000 |
| 29 | 1.3.2.3 | Pruebas de empalme de requerimientos funcionales y no funcionales | manual | 6h | 2020-07-16 09:00 A | 2020-07-16 17:00 A | 28 | 100% | Desarrollador 2; Desarrollador 1; Computador 1; Computador 2; Internet | 12h | 12h | 360,000 | 360,000 |
| 30 | 1.3.2.4 | Acta de cambios del prototipo | manual | 2h | 2020-07-16 17:00 A | 2020-07-17 11:00 A | 29 | 100% | Internet; Computador 2; Desarrollador 2; Computador 1 [0.1%]; Desarrollador 1 | 4h | 4h | 120,000 | 120,000 |
| 31 | 1.3.3 | **Casos de prueba** |  | 1.5d | 2020-07-17 11:00 A | 2020-07-20 17:00 A |  | 100% |  | 24h | 24h | 720,000 | 720,000 |
| 32 | 1.3.3.1 | Realizacion de formato de caso de prueba virtual | manual | 7h | 2020-07-17 11:00 A | 2020-07-20 10:00 A | 30 | 100% | Internet; Computador 1 [0.1%]; Desarrollador 1 | 7h | 7h | 210,000 | 210,000 |
| 33 | 1.3.3.2 | Realizacion de formato de caso de prueba virtual | manual | 7h | 2020-07-17 11:00 A | 2020-07-20 10:00 A | 30 | 100% | Internet; Computador 2 [0.1%]; Desarrollador 2 | 7h | 7h | 210,000 | 210,000 |
| 34 | 1.3.3.3 | Realizacion de formato de caso de prueba virtual | manual | 5h | 2020-07-20 10:00 A | 2020-07-20 17:00 A | 32 | 100% | Desarrollador 1; Computador 1; Internet | 5h | 5h | 150,000 | 150,000 |
| 35 | 1.3.3.4 | Realizacion de formato de caso de prueba virtual | manual | 5h | 2020-07-20 10:00 A | 2020-07-20 17:00 A | 33 | 100% | Internet; Computador 2 [0.1%]; Desarrollador 2 | 5h | 5h | 150,000 | 150,000 |
| 36 | 1.4 | Control avance 002 | manual | 8h | 2020-07-20 17:00 A | 2020-07-21 17:00 A | 35 | 100% | Desarrollador 2; Desarrollador 1; Computador 1; Internet | 16h | 16h | 480,000 | 480,000 |
| 37 | 1.5 | **Software desarrollado e instalado** |  | 5d | 2020-07-21 23:00 A | 2020-07-28 19:00 A |  | 100% |  | 80h | 80h | 2,400,000 | 2,400,000 |
| 38 | 1.5.1 | **Ambiente de desarrollo** |  | 1d | 2020-07-21 23:00 A | 2020-07-22 19:00 A |  | 100% |  | 16h | 16h | 480,000 | 480,000 |
| 39 | 1.5.1.1 | Realizacion del check list de las herramientas a utilizar |  | 8h | 2020-07-22 08:00 A | 2020-07-22 19:00 A | 36 | 100% | Internet; Computador 1 [0.1%]; Desarrollador 1 | 8h | 8h | 240,000 | 240,000 |
| 40 | 1.5.1.2 | Obtencion de licecias de las herramientas a utilizar |  | 8h | 2020-07-21 23:00 A | 2020-07-22 19:00 A | 36 | 100% | Desarrollador 2; Computador 2; Internet | 8h | 8h | 240,000 | 240,000 |
| 41 | 1.5.2 | **Modelo 1** |  | 2d | 2020-07-23 09:00 A | 2020-07-24 19:00 A |  | 100% |  | 32h | 32h | 960,000 | 960,000 |
| 42 | 1.5.2.1 | Desarollo del modelo | manual | 8h | 2020-07-23 09:00 A | 2020-07-23 19:00 A | 40 | 100% | Internet; Computador 1 [0.1%]; Desarrollador 1 | 8h | 8h | 240,000 | 240,000 |
| 43 | 1.5.2.2 | Pruebas de rendimiento | manual | 8h | 2020-07-23 09:00 A | 2020-07-23 19:00 A | 40 | 100% | Internet; Computador 2; Desarrollador 2 | 8h | 8h | 240,000 | 240,000 |
| 44 | 1.5.2.3 | Busqueda de fallos | manual | 8h | 2020-07-24 09:00 A | 2020-07-24 19:00 A | 42, 43 | 100% | Internet; Computador 1 [0.1%]; Desarrollador 1; Computador 2 [0.1%]; Desarrollador 2 | 16h | 16h | 480,000 | 480,000 |
| 45 | 1.5.3 | **Modelo 2** |  | 2d | 2020-07-27 09:00 A | 2020-07-28 19:00 A |  | 100% |  | 32h | 32h | 960,000 | 960,000 |
| 46 | 1.5.3.1 | Desarollo del modelo | manual | 8h | 2020-07-27 09:00 A | 2020-07-27 19:00 A | 44 | 100% | Internet [0.1%]; Desarrollador 2; Computador 2 [0.1%] | 8h | 8h | 240,000 | 240,000 |
| 47 | 1.5.3.2 | Pruebas de rendimiento | manual | 8h | 2020-07-27 09:00 A | 2020-07-27 19:00 A | 44 | 100% | Computador 1 [0.1%]; Desarrollador 1; Internet [0.1%] | 8h | 8h | 240,000 | 240,000 |
| 48 | 1.5.3.3 | Busqueda de fallos | manual | 8h | 2020-07-28 09:00 A | 2020-07-28 19:00 A | 46, 47 | 100% | Desarrollador 1; Computador 1 [0.1%]; Internet [0.1%]; Computador 2 [0.1%]; Desarrollador 2 | 16h | 16h | 480,000 | 480,000 |
| 49 | 1.6 | Control avance 003 | manual | 2h | 2020-07-29 09:00 A | 2020-07-29 11:00 A | 48 | 100% | Desarrollador 2; Desarrollador 1; Computador 1; Internet | 4h | 4h | 120,000 | 120,000 |

| ID | WBS | Task | Type | Duration | Start | Finish | Predecessors | Complete | Resources | Work | Actual work | Cost | Actual cost |
| --- | --- | --- | --- | --- | --- | --- | --- | --- | --- | --- | --- | --- | --- |
| 50 | 1.7 | **Reportes de prueba** |  | 5.38d | 2020-07-29 11:00 A | 2020-08-05 16:00 A |  | 100% |  | 63h | 63h | 1,890,000 | 1,890,000 |
| 51 | 1.7.1 | **Ambiente de prueba** |  | 1d | 2020-07-29 11:00 A | 2020-07-30 11:00 A |  | 100% |  | 16h | 16h | 480,000 | 480,000 |
| 52 | 1.7.1.1 | Preparacion de checklist con los conceptos a evaluar | manual | 8h | 2020-07-29 11:00 A | 2020-07-30 11:00 A | 49 | 100% | Computador 2 [0.1%]; Internet [0.1%]; Desarrollador 2 | 8h | 8h | 240,000 | 240,000 |
| 53 | 1.7.1.2 | Preparacion de los modelos | manual | 8h | 2020-07-29 11:00 A | 2020-07-30 11:00 A | 49 | 100% | Computador 1 [0.1%]; Desarrollador 1; Internet [0.1%] | 8h | 8h | 240,000 | 240,000 |
| 54 | 1.7.2 | **Pruebas integrales** |  | 1.75d | 2020-07-30 11:00 A | 2020-07-31 19:00 A |  | 100% |  | 20h | 20h | 600,000 | 600,000 |
| 55 | 1.7.2.1 | Generar formato de pruebas | manual | 8h | 2020-07-30 11:00 A | 2020-07-31 11:00 A | 53 | 100% | Desarrollador 1; Computador 1 [0.1%]; Internet [0.1%]; Computador 2; Desarrollador 2 | 8h | 8h | 240,000 | 240,000 |
| 56 | 1.7.2.2 | Realizacion de pruebas individuales | manual | 6h | 2020-07-31 11:00 A | 2020-07-31 19:00 A | 55 | 100% | Computador 1 [0.1%]; Desarrollador 1; Internet [0.1%] | 6h | 6h | 180,000 | 180,000 |
| 57 | 1.7.2.3 | Realizacion de pruebas integrales | manual | 6h | 2020-07-31 11:00 A | 2020-07-31 19:00 A | 55 | 100% | Internet [0.1%]; Computador 2 [0.1%]; Desarrollador 2 | 6h | 6h | 180,000 | 180,000 |
| 58 | 1.7.3 | **Pruebas de aceptación de usuario** |  | 2.62d | 2020-08-03 09:00 A | 2020-08-05 16:00 A |  | 100% |  | 27h | 27h | 810,000 | 810,000 |
| 59 | 1.7.3.1 | Generar formato de aceptacion y calificacion del usuario | manual | 10h | 2020-08-03 09:00 A | 2020-08-04 11:00 A | 57 | 100% | Computador 1 [0.1%]; Desarrollador 1; Internet [0.1%] | 10h | 10h | 300,000 | 300,000 |
| 60 | 1.7.3.2 | Pruebas individuales ante el usuario | manual | 6h | 2020-08-04 11:00 A | 2020-08-04 19:00 A | 59 | 100% | Computador 2 [0.1%]; Desarrollador 2; Internet [0.1%] | 6h | 6h | 180,000 | 180,000 |
| 61 | 1.7.3.3 | Pruebas integrales ante el usuario | manual | 6h | 2020-08-04 11:00 A | 2020-08-04 19:00 A | 59 | 100% | Computador 1 [0.1%]; Internet [0.1%]; Desarrollador 1 | 6h | 6h | 180,000 | 180,000 |
| 62 | 1.7.3.4 | Recoleccion de datos resultantes de la aceptacion del usuario | manual | 5h | 2020-08-05 09:00 A | 2020-08-05 16:00 A | 60 | 100% | Computador 2 [0.1%]; Desarrollador 2; Internet [0.1%] | 5h | 5h | 150,000 | 150,000 |
| 63 | 1.8 | Control avance 004 | manual | 5h | 2020-08-05 16:00 A | 2020-08-06 11:00 A | 62 | 100% | Desarrollador 2; Desarrollador 1; Computador 1 [0.1%]; Internet [0.1%] | 10h | 10h | 300,000 | 300,000 |
| 64 | 1.9 | **Entrega a operaciones** |  | 4.12d | 2020-08-06 11:00 A | 2020-08-12 12:00 A |  | 100% |  | 62h | 62h | 1,860,000 | 1,860,000 |
| 65 | 1.9.1 | **Reporte de puesta en producción** |  | 1d | 2020-08-06 11:00 A | 2020-08-07 11:00 A |  | 100% |  | 16h | 16h | 480,000 | 480,000 |
| 66 | 1.9.1.1 | Recoleccion de datos de puesta en produccion | manual | 4h | 2020-08-06 11:00 A | 2020-08-06 17:00 A | 63 | 100% | Computador 2 [0.1%]; Desarrollador 2; Internet [0.1%] | 4h | 4h | 120,000 | 120,000 |
| 67 | 1.9.1.2 | Analisis de datos de puesta en produccion | manual | 4h | 2020-08-06 11:00 A | 2020-08-06 17:00 A | 63 | 100% | Computador 1 [0.1%]; Desarrollador 1; Internet [0.1%] | 4h | 4h | 120,000 | 120,000 |
| 68 | 1.9.1.3 | Realizacion reporte del desarrollo de la produccion | manual | 4h | 2020-08-06 17:00 A | 2020-08-07 11:00 A | 66, 67 | 100% | Desarrollador 1; Computador 1 [0.1%]; Internet [0.1%]; Desarrollador 2 | 8h | 8h | 240,000 | 240,000 |
| 69 | 1.9.2 | **Pruebas posproducción** |  | 1.62d | 2020-08-07 11:00 A | 2020-08-10 18:00 A |  | 100% |  | 26h | 26h | 780,000 | 780,000 |
| 70 | 1.9.2.1 | Realizacion de pruebas | manual | 6h | 2020-08-07 11:00 A | 2020-08-07 19:00 A | 68 | 100% | Desarrollador 2; Desarrollador 1; Computador 1 [0.1%]; Computador 2 [0.1%]; Internet [0.1%] | 12h | 12h | 360,000 | 360,000 |
| 71 | 1.9.2.2 | Recopilacion de resultados de pruebas | manual | 2h | 2020-08-10 09:00 A | 2020-08-10 11:00 A | 70 | 100% | Computador 1 [0.1%]; Internet [0.1%]; Desarrollador 1 | 2h | 2h | 60,000 | 60,000 |
| 72 | 1.9.2.3 | Analisis de Resultados | manual | 2h | 2020-08-10 09:00 A | 2020-08-10 11:00 A | 70 | 100% | Internet [0.1%]; Computador 2 [0.1%]; Desarrollador 2 | 2h | 2h | 60,000 | 60,000 |
| 73 | 1.9.2.4 | Definir mejoras | manual | 5h | 2020-08-10 11:00 A | 2020-08-10 18:00 A | 71 | 100% | Desarrollador 1; Computador 1 [0.1%]; Internet [0.1%] | 5h | 5h | 150,000 | 150,000 |
| 74 | 1.9.2.5 | Realizar reporte de pruebas posproduccion | manual | 5h | 2020-08-10 11:00 A | 2020-08-10 18:00 A | 72 | 100% | Internet [0.1%]; Computador 2 [0.1%]; Desarrollador 2 | 5h | 5h | 150,000 | 150,000 |

| ID | WBS | Task | Type | Duration | Start | Finish | Predecessors | Complete | Resources | Work | Actual work | Cost | Actual cost |
| --- | --- | --- | --- | --- | --- | --- | --- | --- | --- | --- | --- | --- | --- |
| 75 | 1.9.3 | **Garantía** |  | 1.5d | 2020-08-10 18:00 A | 2020-08-12 12:00 A |  | 100% |  | 20h | 20h | 600,000 | 600,000 |
| 76 | 1.9.3.1 | Realizar acta de garantia | manual | 8h | 2020-08-10 18:00 A | 2020-08-11 18:00 A | 73, 74 | 100% | Desarrollador 1; Computador 2 [0.1%]; Desarrollador 2; Internet [0.1%]; Computador 1 [0.1%] | 16h | 16h | 480,000 | 480,000 |
| 77 | 1.9.3.2 | Aceptacion del acta de garantia | manual | 4h | 2020-08-11 18:00 A | 2020-08-12 12:00 A | 76 | 100% | Desarrollador 1; Computador 1 [0.1%]; Internet [0.1%] | 4h | 4h | 120,000 | 120,000 |
| 78 | 1.10 | Control final | manual | 4h | 2020-08-12 12:00 A | 2020-08-12 18:00 A | 77 | 100% | Desarrollador 2; Desarrollador 1; Computador 1 [0.1%]; Computador 2 [0.1%] | 8h | 8h | 240,000 | 240,000 |
| 79 | 1.11 | Tiempo para mitigación de riesgos | manual | 6d | 2020-08-12 18:00 A | 2020-08-20 18:00 A | 78 | 100% | Computador 1 [0.1%]; Computador 2 [0.1%]; Internet [0.1%]; Desarrollador 2; Desarrollador 1 | 96h | 96h | 2,880,000 | 2,880,000 |
